# Предварительный план2007

Schedule from MS Project, 2013-04-22 to 2014-09-01, A marks actual dates.

## Calendars

- Стандартный: Mon-Fri 09:00-13:00, 14:00-18:00; Sat-Sun off. Exceptions (off unless hours are given): 2013-05-01 to 2013-05-05 (Первое мая), 2013-05-09 to 2013-05-12 (Девятое мая).

## Resources

| Resource |
| --- |
| Шилин Роман |
| Аналитик |
| Андрей Пирожков |
| Тугушев Илья |
| Денис Митавский |
| Алексей Львов |
| Андрей Карандей |
| Валерий Мацукевич |
| Java разработчик3 |
| Java разработчик4 |
| WEB-дизайнер |
| Влад Симоненко |
| Андрей Цветков |
| Java разработчик5 |
| Тест Аналитик |
| Java разработчик6 |
| Тестировщик |
| Технический писатель |
| Технолог - администратор |
| Технический писатель2 |
| Системный аналитик1 |
| Системный аналитик2 |
| Системный аналитик3 |
| Системный аналитик4 |
| Владимир Панов |
| Сергей Кашанский |
| Роман Митинков |
| Роман Болотов |
| Глеб Наздрачев |
| Евгения Капустина |
| Эдуард Михайлов |
| Тимофей Билый |
| (БТЛ) Ларин |
| (БТЛ) Еренцов |
| (БТЛ) Лякин |
| Ярослав Бондарчук |

## Schedule

| ID | WBS | Task | Type | Duration | Start | Finish | Predecessors | Complete | Remaining | Total slack | Free slack | Constraint | Resources | Work | Actual work |
| --- | --- | --- | --- | --- | --- | --- | --- | --- | --- | --- | --- | --- | --- | --- | --- |
| 1 | 1 | **Разработка версии CM4/5** |  | 351d? | 2013-04-22 A | 2014-09-01 |  | 25% | 262.7d? | 0d |  |  |  | 25445.6h | 5676.33h |
| 2 | 1.1 | Принято решение о начале разработки | milestone | 0d | 2013-04-22 | 2013-04-22 |  |  |  | 0d |  | start no earlier than 2013-04-22 |  |  |  |
| 3 | 1.2 | Управление проектом |  | 267d | 2013-04-22 A | 2014-05-06 | 2 | 35% | 173.55d | 84d |  |  | Шилин Роман | 2136h | 747.6h |
| 4 | 1.3 | **Управление требованиями** |  | 331d | 2013-05-27 A | 2014-09-01 | 2 | 19% | 268.4d | 0d |  |  | Аналитик | 4567.2h | 1034.44h |
| 5 | 1.3.1 | Выделен аналитик на проект | milestone | 0d | 2013-05-27 A | 2013-05-27 A |  | 100% |  |  |  | start no earlier than 2013-05-27 |  |  |  |
| 6 | 1.3.2 | Формирование скоупа проекта _ верхний уровень |  | 15d | 2013-05-27 A | 2013-06-14 A | 5 | 100% |  |  |  |  | Евгения Капустина | 120h | 120h |
| 7 | 1.3.3 | Скоуп на систему сформирован и утвержден | milestone | 0d | 2013-06-21 A | 2013-06-21 A | 6FS+5d | 100% |  |  |  |  |  |  |  |
| 8 | 1.3.4 | Сопровождение требований |  | 311d | 2013-06-24 A | 2014-09-01 | 5, 7 | 15% | 264.35d | 0d |  |  | Эдуард Михайлов; Евгения Капустина | 1799.2h | 503.8h |
| 9 | 1.4 | **Создание модуля "Делопроизводство" (документоориентированная среда)** |  | 274d? | 2013-04-22 A | 2014-05-15 |  | 25% | 204.89d? | 77d |  |  |  | 18294.4h | 3894.29h |
| 10 | 1.4.1 | Первичные требования для создания модуля "Делопроизводство" подготовлены | milestone | 0d | 2013-04-22 | 2013-04-22 | 2 |  |  | 0d |  | finish no earlier than 2012-04-02 |  |  |  |
| 11 | 1.4.2 | **Апробация идей прототипа** |  | 24d | 2013-04-29 A | 2013-06-06 |  | 99% | 0d | 322d |  |  |  | 144h | 144h |
| 12 | 1.4.2.1 | Пирожков доступен | milestone | 0d | 2013-06-03 | 2013-06-03 |  |  |  | 326d |  | start no earlier than 2013-06-03 |  |  |  |
| 13 | 1.4.2.2 | Проведение предварительных испытаний системы |  | 9d | 2013-04-29 A | 2013-05-16 A | 10FS+5d | 100% |  |  |  |  | Андрей Цветков | 72h | 72h |
| 14 | 1.4.2.3 | Описание обработки ВХ. Док. На примере технологий прототипа |  | 9d | 2013-05-20 A | 2013-06-06 A |  | 100% |  |  |  | start no earlier than 2013-05-20 | Андрей Пирожков | 72h | 72h |
| 15 | 1.4.3 | **Настройка инфраструктуры** |  | 37d | 2013-05-20 A | 2013-07-09 | 24 | 67% | 12.33d | 0d |  |  |  | 120h | 80h |
| 16 | 1.4.3.1 | Настройка непрерывной интеграции |  | 4d | 2013-05-20 A | 2013-05-23 A |  | 100% |  |  |  |  | Тугушев Илья | 32h | 32h |
| 17 | 1.4.3.2 | Поддержка UNIT-тестирования и интеграционного тестирования на уроне среды непрерывной интеграции |  | 5d | 2013-06-04 | 2013-06-10 |  |  |  | 0d |  | start no earlier than 2013-06-04 | Тугушев Илья | 40h |  |
| 18 | 1.4.3.3 | Репакеджинг проекта |  | 3d | 2013-05-27 A | 2013-05-29 A |  | 100% |  |  |  | start no earlier than 2013-05-27 | Сергей Кашанский | 24h | 24h |
| 19 | 1.4.3.4 | Автоматическое заполнение параметров JDBC через Maven |  | 3d | 2013-07-05 A | 2013-07-09 A | 30 | 100% |  |  |  |  | Андрей Цветков | 24h | 24h |
| 20 | 1.4.4 | **Проектирование и формирование ядра системы** |  | 194d? | 2013-04-22 A | 2014-01-23 | 10 | 40% | 116.08d? | 89d | 0d |  |  | 8010.4h | 2983.89h |
| 21 | 1.4.4.1 | **Определение структуры модуля Делопроизводство** |  | 25d | 2013-04-22 A | 2013-05-31 A |  | 100% |  |  |  |  |  | 352h | 352h |
| 22 | 1.4.4.1.1 | Разбивка на слои |  | 5d | 2013-04-22 A | 2013-04-26 A |  | 100% |  |  |  |  | Денис Митавский [50%]; Андрей Пирожков [50%] | 40h | 40h |
| 23 | 1.4.4.1.2 | Конфигурации, загрузка и инициализация системы в базовой конфигурации |  | 5d | 2013-04-29 A | 2013-05-08 A | 22 | 100% |  |  |  |  | Валерий Мацукевич; Денис Митавский [50%] | 60h | 60h |
| 24 | 1.4.4.1.3 | Базовая конфигурация объектов системы |  | 5d | 2013-05-13 A | 2013-05-17 A | 22, 23 | 100% |  |  |  |  | Денис Митавский [50%]; Валерий Мацукевич | 60h | 60h |
| 25 | 1.4.4.1.4 | Юнит-тестирование - базис |  | 6d | 2013-05-17 A | 2013-05-24 A | 13 | 100% |  |  |  |  | Денис Митавский [50%]; Андрей Цветков | 72h | 72h |
| 26 | 1.4.4.1.5 | Базовая имплементация слоя DAO |  | 5d | 2013-05-20 A | 2013-05-24 A | 24 | 100% |  |  |  |  | Валерий Мацукевич | 40h | 40h |
| 27 | 1.4.4.1.6 | Обеспечение программных компонет верификации первой очереди |  | 5d | 2013-05-27 A | 2013-05-31 A | 26 | 100% |  |  |  |  | Валерий Мацукевич; Андрей Цветков | 80h | 80h |

Notes:
- 27: UNIT тестирование в рамках наработанного кода

| ID | WBS | Task | Type | Duration | Start | Finish | Predecessors | Complete | Remaining | Total slack | Free slack | Constraint | Resources | Work | Actual work |
| --- | --- | --- | --- | --- | --- | --- | --- | --- | --- | --- | --- | --- | --- | --- | --- |
| 28 | 1.4.4.2 | **DAO** |  | 43d? | 2013-06-03 A | 2013-07-31 A | 26, 27 | 100% |  |  |  |  |  | 224h | 224h |
| 29 | 1.4.4.2.1 | DAO для бизнес-объектов |  | 7d | 2013-06-03 A | 2013-06-11 A |  | 100% |  |  |  |  | Валерий Мацукевич | 56h | 56h |
| 30 | 1.4.4.2.2 | DAO для коллекций |  | 13d | 2013-06-12 A | 2013-07-04 A | 29 | 100% |  |  |  |  | Андрей Цветков | 104h | 104h |
| 31 | 1.4.4.2.3 | Функционал системы готов для проведения проектирования интеграции с GUI СМ4 | milestone | 0d | 2013-06-24 A | 2013-06-24 A | 29, 30 | 100% |  |  |  |  |  |  |  |
| 32 | 1.4.4.2.4 | DAO - утилитарные поля |  | 6d | 2013-06-25 A | 2013-07-08 A | 30 | 100% |  |  |  |  | Денис Митавский [50%] | 24h | 24h |
| 33 | 1.4.4.2.5 | DAO - кэш уровня транзакции |  | 5d? | 2013-07-25 A | 2013-07-31 A | 80 | 100% |  |  |  |  | Влад Симоненко | 40h | 40h |
| 34 | 1.4.4.3 | CRUD-сервис для бизнес-объектов |  | 10d | 2013-06-11 A | 2013-06-24 A | 30FF | 100% |  |  |  |  | Андрей Цветков | 80h | 80h |
| 35 | 1.4.4.4 | Расширение CRUD для интеграции с CMJ |  | 5d | 2013-08-08 A | 2013-08-14 A |  | 100% |  |  |  | start no earlier than 2013-08-08 | Андрей Карандей | 40h | 40h |
| 36 | 1.4.4.5 | Поддержка отсортированных дочерних бизнес-объектов |  | 5d | 2013-08-21 | 2013-08-27 | 53 |  |  | -102d | 0d |  | Валерий Мацукевич | 40h |  |
| 37 | 1.4.4.6 | Настройка Datasources/Jaas сервера приложений средствами Maven |  | 2d | 2013-07-05 A | 2013-07-08 A | 30 | 100% |  |  |  |  | Сергей Кашанский | 16h | 16h |
| 38 | 1.4.4.7 | Рефакторинг |  | 4d | 2013-07-03 A | 2013-07-08 A | 26 | 100% |  |  |  | start no earlier than 2013-07-03 | Валерий Мацукевич | 32h | 32h |
| 39 | 1.4.4.8 | **Права доступа** |  | 65d | 2013-06-12 A | 2013-09-10 |  | 90% | 6.54d | 186d |  |  |  | 488h | 426.8h |
| 40 | 1.4.4.8.1 | Права - оптимизация хранения (проектирование) |  | 30d | 2013-06-12 A | 2013-07-23 A | 29 | 100% |  |  |  |  | Андрей Пирожков [50%] | 120h | 120h |
| 41 | 1.4.4.8.2 | Описание существующими декларативными средствами конфигурации |  | 19d | 2013-07-16 A | 2013-08-09 A | 40, 19 | 100% |  |  |  |  | Андрей Цветков | 152h | 152h |
| 42 | 1.4.4.8.3 | Автофильтрация |  | 10d | 2013-07-29 A | 2013-08-16 A | 41 | 100% |  |  |  |  | Андрей Цветков | 80h | 80h |
| 43 | 1.4.4.8.4 | Пересчёт прав доступа |  | 17d | 2013-08-19 A | 2013-09-10 | 42 | 55% | 7.65d | 186d |  |  | Андрей Цветков | 136h | 74.8h |
| 44 | 1.4.4.9 | **Workflow - интеграция с Activiti** |  | 91d | 2013-06-07 A | 2013-10-11 | 14 | 20% | 72.99d | 83d | 0d |  |  | 344h | 38h |
| 45 | 1.4.4.9.1 | Проектирование |  | 10d | 2013-06-07 A | 2013-07-24 | 40 | 95% | 0.5d | 120d | 37d |  | Андрей Пирожков [50%] | 40h | 38h |
| 46 | 1.4.4.9.2 | готова постановка по БП | milestone | 0d | 2013-09-09 | 2013-09-09 |  |  |  | 70d | 0d | start no earlier than 2013-09-09 |  |  |  |
| 47 | 1.4.4.9.3 | Разработка |  | 20d | 2013-09-16 | 2013-10-11 | 45, 46 |  |  | 83d |  | start no earlier than 2013-09-16 | (БТЛ) Ларин | 160h |  |
| 48 | 1.4.4.9.4 | **Действия** |  | 18d | 2013-09-18 | 2013-10-11 |  |  |  | 83d |  |  |  | 144h |  |
| 49 | 1.4.4.9.4.1 | Концепция/Архитектура |  | 4d | 2013-09-18 | 2013-09-23 | 106 |  |  | 83d | 0d | start no earlier than 2013-09-16 | Денис Митавский | 32h |  |
| 50 | 1.4.4.9.4.2 | Реализация |  | 14d | 2013-09-24 | 2013-10-11 | 49 |  |  | 83d |  |  | (БТЛ) Ларин | 112h |  |
| 51 | 1.4.4.10 | **Наследование ???** |  | 8d | 2013-08-09 A | 2013-08-20 A | 45 | 100% |  |  |  |  | Андрей Пирожков [50%] | 88h | 88h |
| 52 | 1.4.4.10.1 | Проектирование функции "Наследование" |  | 2d | 2013-08-09 A | 2013-08-12 A |  | 100% |  |  |  | finish no earlier than 2013-08-12 | Андрей Пирожков | 16h | 16h |
| 53 | 1.4.4.10.2 | Разработка функции "Наследование" |  | 6d | 2013-08-13 A | 2013-08-20 A | 52 | 100% |  |  |  |  | Валерий Мацукевич | 48h | 48h |

Notes:
- 34: - проектирование базового API / - имплементация
- 36: Для отображени и поддержания заданного порядка следования объектов
- 40: Права доступа - оптимизация подхода, / подбор других названий сущностей (таблицы) переименовать таблицы и улучшить производительность
- 41: Права доступа - описание существующими декларативными средствами конфигурации / (для автоматического создания таблиц) + / конфигурирование под-запроса для фильтрации - там же
- 42: Права доступа - авто-фильтрация / + "внедрение в под-запросы"
- 44: Задачи: / - модель процесса (BPMN) / - Имплементация WF - сервиса , взаимодействие системы с Аctiviti
- 51: Архитектура - форма хранения данных (с учетом производительности) / Наследование типов объектов - уровень DAO

| ID | WBS | Task | Type | Duration | Start | Finish | Predecessors | Complete | Remaining | Total slack | Free slack | Constraint | Resources | Work | Actual work |
| --- | --- | --- | --- | --- | --- | --- | --- | --- | --- | --- | --- | --- | --- | --- | --- |
| 54 | 1.4.4.11 | **Коллекции** |  | 74d | 2013-05-29 A | 2013-09-09 |  | 56% | 32.38d | 164d |  |  |  | 188h | 188h |
| 55 | 1.4.4.11.1 | Коллекции - конфигурация |  | 3d | 2013-05-29 A | 2013-05-31 A |  | 100% |  |  |  |  | Денис Митавский | 24h | 24h |
| 56 | 1.4.4.11.2 | DAO - язык запросов коллекций |  | 12d | 2013-05-29 A | 2013-06-17 A | 55 | 100% |  |  |  |  | Сергей Кашанский; Денис Митавский [50%] | 140h | 140h |
| 57 | 1.4.4.11.3 | Сервис получения и получения счетчиков |  | 3d | 2013-05-29 A | 2013-05-31 A | 55 | 100% |  |  |  |  | Сергей Кашанский | 24h | 24h |
| 58 | 1.4.4.11.4 | ПКД ???? |  | 14d | 2013-08-21 | 2013-09-09 | 56, 51 |  |  | 164d | 0d |  |  |  |  |
| 59 | 1.4.4.12 | **Бизнес-объекты (иерархии доменных объектов)** |  | 35.25d | 2013-07-24 A | 2013-09-11 A |  | 100% |  |  |  |  |  | 140.8h | 140.8h |
| 60 | 1.4.4.12.1 | Проектирование |  | 8d | 2013-07-24 A | 2013-08-16 A | 61SF, 52 | 100% |  |  |  |  | Андрей Пирожков [20%] | 12.8h | 12.8h |
| 61 | 1.4.4.12.2 | Реализация1 |  | 3d | 2013-07-31 A | 2013-08-02 A | 104SF | 100% |  |  |  |  | Андрей Пирожков | 24h | 24h |
| 62 | 1.4.4.12.3 | Подготовка описания по обновленным принциапам работы |  | 13d | 2013-08-16 A | 2013-09-11 A | 60 | 100% |  |  |  |  | Андрей Пирожков | 104h | 104h |
| 63 | 1.4.4.13 | **Поиск** |  | 56d | 2013-07-30 A | 2013-10-15 | 34 | 10% | 50.4d | 161d |  |  |  | 380h | 48h |
| 64 | 1.4.4.13.1 | Идея поиска оформлена | milestone | 0d | 2013-09-09 | 2013-09-09 |  |  |  | 0d |  | finish no earlier than 2013-09-09 |  |  |  |
| 65 | 1.4.4.13.2 | Поиск |  | 15d | 2013-07-30 A | 2013-09-24 | 64 | 27% | 11d | 161d | 0d |  | Андрей Пирожков [50%]; Андрей Цветков | 180h | 48h |
| 66 | 1.4.4.13.3 | Полнотекстовый поиск |  | 25d | 2013-09-11 | 2013-10-15 | 64, 65FS-10d |  |  | 161d |  |  | Валерий Мацукевич | 200h |  |
| 67 | 1.4.4.14 | **Слой сопряжения GUI CM4** |  | 110.25d | 2013-08-05 A | 2014-01-06 |  | 18% | 90.26d | 102.75d |  |  |  | 1209.6h | 223.89h |
| 68 | 1.4.4.14.1 | Решение принято и ресурсы достуны | milestone | 0d | 2013-08-05 A | 2013-08-05 A |  | 100% |  |  |  | start no earlier than 2013-08-05 |  |  |  |
| 69 | 1.4.4.14.2 | Реализация коннекторов к платформе |  | 97.25d | 2013-08-08 A | 2013-12-23 | 68FS+3d | 20% | 77.8d | 102.75d | 0d |  | Тугушев Илья [75%]; Глеб Наздрачев | 1120h | 223.89h |
| 70 | 1.4.4.14.3 | Описание решения есть. Можно начинать разработку | milestone | 0d | 2013-08-28 A | 2013-08-28 A |  | 100% |  |  |  | start no earlier than 2013-08-28 |  |  |  |
| 71 | 1.4.4.14.4 | Проработка задания выполнена, можно привлекать разработчиков БТЛ | milestone | 0d | 2013-09-11 | 2013-09-11 |  |  |  | 186d |  | start no earlier than 2013-09-11 |  |  |  |
| 72 | 1.4.4.14.5 | Рефакторинг СМ 4.2.1 выполнен | milestone | 0d | 2013-09-30 | 2013-09-30 |  |  |  | 172d |  | finish no earlier than 2013-09-30 |  |  |  |
| 73 | 1.4.4.14.6 | Сопряжение - работа с вложениями |  | 7d | 2013-12-23 | 2014-01-01 | 69, 80 |  |  | 102.75d | 0d |  | Влад Симоненко | 56h |  |
| 74 | 1.4.4.14.7 | REST-протокол для АРМа - проектирование |  | 3d | 2014-01-01 | 2014-01-06 | 31, 73 |  |  | 102.75d |  |  | Тугушев Илья; Денис Митавский [20%]; Андрей Пирожков [20%] | 33.6h |  |
| 75 | 1.4.4.15 | **Сервис работы с вложениями** |  | 22d | 2013-07-11 A | 2013-08-09 A |  | 100% |  |  |  |  |  | 176h | 176h |
| 76 | 1.4.4.15.1 | Принято решение о проектировании сервиса обработки вложений | milestone | 0d | 2013-07-11 A | 2013-07-11 A |  | 100% |  |  |  | start no earlier than 2013-07-11 |  |  |  |
| 77 | 1.4.4.15.2 | API |  | 5d | 2013-07-11 A | 2013-07-17 A | 76 | 100% |  |  |  |  | Андрей Цветков | 40h | 40h |
| 78 | 1.4.4.15.3 | Реализация |  | 7d | 2013-07-18 A | 2013-07-26 A | 77 | 100% |  |  |  |  | Влад Симоненко | 56h | 56h |
| 79 | 1.4.4.15.4 | Исследования по перехватчику конца транзакции |  | 5d | 2013-07-29 A | 2013-08-02 A | 78 | 100% |  |  |  |  | Влад Симоненко | 40h | 40h |
| 80 | 1.4.4.15.5 | Чистка файлов в случае отката транзакции |  | 5d | 2013-08-05 A | 2013-08-09 A | 79 | 100% |  |  |  |  | Влад Симоненко | 40h | 40h |

Notes:
- 56: DAO - язык запросов коллекций
- 57: Коллекции - сервис получения и получения счетчиков
- 58: Для поддержания реализации избранного, отметок о прочтении и т.д.
- 66: Включая взаимодействие с Solr
- 69: Начальная реализация модуля "документооборот" - замена лотуса

| ID | WBS | Task | Type | Duration | Start | Finish | Predecessors | Complete | Remaining | Total slack | Free slack | Constraint | Resources | Work | Actual work |
| --- | --- | --- | --- | --- | --- | --- | --- | --- | --- | --- | --- | --- | --- | --- | --- |
| 81 | 1.4.4.16 | **Работа с отчетами** |  | 23d | 2013-09-10 | 2013-10-10 |  |  |  | 164d |  |  |  | 276h |  |
| 82 | 1.4.4.16.1 | JDBC-драйвер для системы построения отчётов |  | 8d | 2013-09-10 | 2013-09-19 | 58 |  |  | 164d | 0d |  | Денис Митавский [50%]; Андрей Цветков | 96h |  |
| 83 | 1.4.4.16.2 | Интеграция с Jasper Reports |  | 15d | 2013-09-20 | 2013-10-10 | 82 |  |  | 164d |  |  | Денис Митавский [50%]; Андрей Цветков | 180h |  |
| 84 | 1.4.4.17 | **GUI** |  | 161d? | 2013-04-22 A | 2013-12-09 |  | 41% | 94.73d? | 120d | 0d |  |  | 2056h | 838.4h |
| 85 | 1.4.4.17.1 | Принято решение о применении GWT-компонентов | milestone | 0d | 2013-07-22 A | 2013-07-22 A |  | 100% |  |  |  | start no earlier than 2013-07-22 |  |  |  |
| 86 | 1.4.4.17.2 | Адаптация компонентов GUI из СМ4 для наложения на архитектуру см5 |  | 40d | 2013-07-22 A | 2013-09-16 | 85 | 75% | 10d | 180d |  | start no earlier than 2013-07-11 | Тимофей Билый; Алексей Львов | 640h | 480h |
| 87 | 1.4.4.17.3 | Изучение GWT/Настройка CMJ 4 для дебага |  | 4d | 2013-08-05 A | 2013-08-08 A |  | 100% |  |  |  | start no earlier than 2013-08-05 | Андрей Карандей | 32h | 32h |
| 88 | 1.4.4.17.4 | Разработка базовой архитектуры GUI на основе GWT-компонентов |  | 3d | 2013-07-22 A | 2013-07-24 A | 85 | 100% |  |  |  |  | Денис Митавский | 24h | 24h |
| 89 | 1.4.4.17.5 | Интеграция с JAAS/Аутентификация |  | 5d | 2013-07-31 A | 2013-08-06 A | 88 | 100% |  |  |  | start no earlier than 2013-07-08 | Денис Митавский | 40h | 40h |
| 90 | 1.4.4.17.6 | Архитектура разметки главного экрана |  | 2d | 2013-08-07 A | 2013-08-08 A | 89 | 100% |  |  |  |  | Денис Митавский [50%] | 8h | 8h |
| 91 | 1.4.4.17.7 | **Панель навигации** |  | 29d | 2013-08-09 A | 2013-09-18 |  | 85% | 4.35d | 173d |  |  |  | 56h | 46.4h |
| 92 | 1.4.4.17.7.1 | Проектирование - панель навигации |  | 2d | 2013-08-09 A | 2013-08-12 A | 90 | 100% |  |  |  |  | Денис Митавский [50%] | 8h | 8h |
| 93 | 1.4.4.17.7.2 | Разработка - панель навигации |  | 6d | 2013-09-11 A | 2013-09-18 | 92, 95 | 80% | 1.2d | 173d | 0d |  | Андрей Карандей | 48h | 38.4h |
| 94 | 1.4.4.17.8 | GUI - архитектура плагинов/дочерних плагинов. Базис |  | 15d | 2013-08-13 A | 2013-09-03 A | 92 | 100% |  |  |  |  | Денис Митавский | 120h | 120h |
| 95 | 1.4.4.17.9 | Базовая реализация архитектуры плагинов |  | 5d | 2013-09-04 A | 2013-09-10 A | 94 | 100% |  |  |  |  | Андрей Карандей | 40h | 40h |
| 96 | 1.4.4.17.10 | GUI - отображение отчётов |  | 8d | 2013-04-22 | 2013-05-06 |  |  |  | 273d |  |  |  |  |  |
| 97 | 1.4.4.17.11 | **GUI - плагин отображения коллекций** |  | 15d | 2013-09-04 | 2013-09-24 | 94 |  |  | 1d |  |  |  | 64h |  |
| 98 | 1.4.4.17.11.1 | Проектирование |  | 2d | 2013-09-04 | 2013-09-05 | 94 |  |  | 1d | 0d |  | Денис Митавский | 16h |  |
| 99 | 1.4.4.17.11.2 | Разработка |  | 6d | 2013-09-17 | 2013-09-24 | 105 |  |  | 174d |  |  | Ярослав Бондарчук | 48h |  |
| 100 | 1.4.4.17.12 | **GUI - действия** |  | 96d | 2013-04-22 A | 2013-09-09 |  | 13% | 84d | 185d |  |  |  | 8h | 4h |
| 101 | 1.4.4.17.12.1 | Проектирование |  | 2d | 2013-09-06 A | 2013-09-09 | 98 | 50% | 1d | 185d |  |  | Денис Митавский [50%] | 8h | 4h |
| 102 | 1.4.4.17.12.2 | Разработка |  | 6d | 2013-04-22 | 2013-04-29 |  |  |  | 275d |  |  |  |  |  |
| 103 | 1.4.4.17.13 | **Формы встроенного GUI** |  | 15d | 2013-09-10 A | 2013-09-30 |  | 38% | 9.38d | 170d |  |  |  | 124h | 44h |
| 104 | 1.4.4.17.13.1 | Конфигурация-архитектура |  | 1d | 2013-09-10 A | 2013-09-10 A | 101 | 100% |  |  |  |  | Денис Митавский [50%] | 4h | 4h |
| 105 | 1.4.4.17.13.2 | Маппинг на объекты |  | 2d | 2013-09-13 A | 2013-09-16 A | 104 | 100% |  |  |  |  | Ярослав Бондарчук | 16h | 16h |
| 106 | 1.4.4.17.13.3 | API GWT client-server |  | 3d | 2013-09-13 A | 2013-09-17 A | 104 | 100% |  |  |  |  | Денис Митавский | 24h | 24h |
| 107 | 1.4.4.17.13.4 | Реализация чтения |  | 5d | 2013-09-24 | 2013-09-30 | 49 |  |  | 117d | 0d |  | Денис Митавский | 40h |  |
| 108 | 1.4.4.17.13.5 | Реализация сохранения |  | 5d | 2013-09-19 | 2013-09-25 | 93, 106 |  |  | 173d |  |  | Андрей Карандей | 40h |  |

Notes:
- 82: Используя язык запросов коллеций

| ID | WBS | Task | Duration | Start | Finish | Predecessors | Complete | Remaining | Total slack | Free slack | Resources | Work | Actual work |
| --- | --- | --- | --- | --- | --- | --- | --- | --- | --- | --- | --- | --- | --- |
| 109 | 1.4.4.17.14 | **GUI - поиск** | 11d | 2013-10-01 | 2013-10-15 |  |  |  | 159d |  |  | 72h |  |
| 110 | 1.4.4.17.14.1 | GUI - поиск. Проектирование | 4d | 2013-10-01 | 2013-10-04 | 107 |  |  | 138d | 0d | Денис Митавский [50%] | 16h |  |
| 111 | 1.4.4.17.14.2 | GUI - поиск. Реализация | 7d | 2013-10-07 | 2013-10-15 | 110 |  |  | 159d |  | Андрей Карандей | 56h |  |
| 112 | 1.4.4.17.15 | **GUI - виджеты разработка** | 50d? | 2013-10-01 | 2013-12-09 |  |  |  | 120d |  |  | 808h |  |
| 113 | 1.4.4.17.15.1 | Дата/время | 1d? | 2013-10-01 | 2013-10-01 | 107 |  |  | 169d |  | Тимофей Билый | 8h |  |
| 114 | 1.4.4.17.15.2 | Остальные без особенностей стиля ст.лебедева (базовый набор) | 25d? | 2013-10-01 | 2013-11-04 | 107 |  |  | 117d | 0d | Тимофей Билый; Алексей Львов | 400h |  |
| 115 | 1.4.4.17.15.3 | Остальные для стиля ст.лебедева | 25d? | 2013-11-05 | 2013-12-09 | 114 |  |  | 120d |  | Андрей Карандей; Алексей Львов | 400h |  |
| 116 | 1.4.4.17.16 | **GUI - брендинг, стилизация, темы** | 5d | 2013-11-05 | 2013-11-11 |  |  |  | 140d |  |  | 20h |  |
| 117 | 1.4.4.17.16.1 | Концепция | 5d | 2013-11-05 | 2013-11-11 | 110, 114 |  |  | 117d | 0d | Денис Митавский [50%] | 20h |  |
| 118 | 1.4.4.18 | Тестирование производительности | 25d | 2013-04-22 | 2013-05-31 |  |  |  | 258d |  | Денис Митавский; Валерий Мацукевич | 400h |  |
| 119 | 1.4.4.19 | Расширение функциональности DAO (требования CMJ4.1, базовые требования) | 30d | 2013-08-28 | 2013-10-08 | 36 |  |  | -102d | 0d | Валерий Мацукевич | 240h |  |
| 120 | 1.4.4.20 | Выделение конфигурации GUI в отдельные сущности, к изменению формата которых система не будет восприимчива | 9d | 2013-10-09 | 2013-10-21 | 119 |  |  | -105d | 0d | Валерий Мацукевич | 72h |  |
| 121 | 1.4.4.21 | Защита конфигурационных файлов от изменений | 5d | 2013-10-22 | 2013-10-28 | 120 |  |  | -109d | 0d | Валерий Мацукевич | 40h |  |
| 122 | 1.4.4.22 | Версионность/аудит | 8d | 2013-10-29 | 2013-11-07 | 121 |  |  | -109d | 0d | Валерий Мацукевич | 64h |  |
| 123 | 1.4.4.23 | Блокировки бизнес-объектов | 6d | 2013-11-08 | 2013-11-15 | 122 |  |  | -109d | 0d | Валерий Мацукевич | 48h |  |
| 124 | 1.4.4.24 | Описание структуры модуля Делопроизводство | 20d | 2013-09-10 | 2013-10-07 | 21, 15, 14, 64 |  |  | 87d | 4d | Владимир Панов | 160h |  |
| 125 | 1.4.4.25 | Уточнение состава и сроков работ | 2d | 2013-12-10 | 2013-12-11 | 84 |  |  | 120d |  | Андрей Пирожков; Денис Митавский; Тугушев Илья | 48h |  |
| 126 | 1.4.4.26 | Кросс-СУБД, поддержка Oracle | 15d | 2013-11-18 | 2013-12-06 | 123 |  |  | -109d | 0d | Валерий Мацукевич | 120h |  |
| 127 | 1.4.4.27 | SQL-trace | 5d | 2013-12-09 | 2013-12-13 | 126 |  |  | 103d | 0d | Влад Симоненко | 40h |  |
| 128 | 1.4.4.28 | Локализация (на уровне конфигурации) | 15d | 2013-12-16 | 2014-01-03 | 127 |  |  | 103d |  | Влад Симоненко | 120h |  |
| 129 | 1.4.4.29 | **Интеграция с системой управления учетными записями** | 14d | 2013-11-18 | 2013-12-05 | 123 |  |  | 124d |  |  | 56h |  |
| 130 | 1.4.4.29.1 | Интеграция с ActiveDirectory | 14d | 2013-11-18 | 2013-12-05 |  |  |  | 124d |  | Андрей Пирожков [50%] | 56h |  |
| 131 | 1.4.4.30 | **Расширение функций сервиса конфигурации** | 128d | 2013-07-09 A | 2014-01-02 | 126 | 32% | 86.86d | 89d |  |  | 352h | 72h |
| 132 | 1.4.4.30.1 | Расширяемость конфигурации | 12d | 2013-07-09 A | 2013-12-11 |  | 75% | 3d | 89d | 0d | Валерий Мацукевич | 96h | 72h |
| 133 | 1.4.4.30.2 | Изменение и дополнение конфигурации системы | 16d | 2013-12-12 | 2014-01-02 | 132 |  |  | 89d | 0d | Андрей Пирожков; Роман Митинков | 256h |  |

Notes:
- 118: - полноценное, продуманное, конфигурируемое, полностью автоматизированное (вплоть до промежуточного сбора статистики в СУБД перед запуском тестов производительности) с автоматической генерацией таблиц и графиков, с поддержкой нагружающих потоков и т.п.
- 122: История модификации объекта / Версионность - на бизнес слой
- 126: Кросс-СУБД, поддержка Oracle
- 128: Поддержка ресурсных файлов - в расках конфигурирования ресурсных файлов / Подмена языка в интерфейсе (передача локали пользоввателю) -

| ID | WBS | Task | Duration | Start | Finish | Predecessors | Complete | Remaining | Total slack | Free slack | Resources | Work | Actual work |
| --- | --- | --- | --- | --- | --- | --- | --- | --- | --- | --- | --- | --- | --- |
| 134 | 1.4.4.31 | **Сервис для работы с системным журналом** | 15d | 2014-01-03 | 2014-01-23 | 133 |  |  | 89d |  |  | 120h |  |
| 135 | 1.4.4.31.1 | Ведение журнала действий пользователей и действий с объектами системы | 10d | 2014-01-03 | 2014-01-16 |  |  |  | 89d | 0d | Андрей Карандей | 80h |  |
| 136 | 1.4.4.31.2 | Настройка уровня логирования | 5d | 2014-01-17 | 2014-01-23 | 135 |  |  | 89d |  | Андрей Карандей | 40h |  |
| 137 | 1.4.5 | **Разработка** | 209d | 2013-06-11 A | 2014-03-28 | 15 | 10% | 188.73d | 111d |  |  | 6676h | 686.4h |
| 138 | 1.4.5.1 | Контроль и корректировка технических решений "Архитектурный комитет" | 208d | 2013-06-11 A | 2014-03-28 |  | 28% | 150d | 111d |  | Тугушев Илья [20%]; Андрей Пирожков [20%]; Денис Митавский [20%]; WEB-дизайнер [20%]; Аналитик [20%]; Владимир Панов [50%] | 2436h | 686.4h |
| 139 | 1.4.5.2 | **Разработка серверной логики модуля CMJ** | 60d | 2013-10-14 | 2014-01-03 | 15, 44, 124 |  |  | 83d | 0d |  | 1920h |  |
| 140 | 1.4.5.2.1 | Разработка схем документов модуля CMJ | 40d | 2013-10-14 | 2013-12-06 |  |  |  | 83d | 0d | Андрей Пирожков [50%]; Влад Симоненко | 480h |  |
| 141 | 1.4.5.2.2 | Разработка ЖЦ процессов модуля (WF) | 20d | 2013-12-09 | 2014-01-03 | 140 |  |  | 83d | 0d | Влад Симоненко; Андрей Пирожков [50%] | 240h |  |
| 142 | 1.4.5.2.3 | Разработка логики бизнес- действий модуля CMJ | 60d | 2013-10-14 | 2014-01-03 |  |  |  | 83d | 0d | Алексей Львов; Андрей Пирожков [50%] | 720h |  |
| 143 | 1.4.5.2.4 | Разработка процессов автоматизации для модуля CMJ | 40d | 2013-10-14 | 2013-12-06 |  |  |  | 141d |  | Андрей Карандей | 320h |  |
| 144 | 1.4.5.2.5 | Разработка модели прав доступа (контекстные роли) | 20d | 2013-12-09 | 2014-01-03 | 140 |  |  | 121d |  | Андрей Карандей | 160h |  |
| 145 | 1.4.5.3 | **Разработка Форм для АРМ тематических администраторов** | 40d | 2013-12-23 | 2014-02-17 | 69 |  |  | 140.75d |  |  | 960h |  |
| 146 | 1.4.5.3.1 | **Подготовка работы со списками значений** | 40d | 2013-12-23 | 2014-02-17 |  |  |  | 140.75d |  |  | 640h |  |
| 147 | 1.4.5.3.1.1 | Разработка функционала учета организационно штатной структуры | 40d | 2013-12-23 | 2014-02-17 |  |  |  | 140.75d |  | Андрей Цветков | 320h |  |
| 148 | 1.4.5.3.1.2 | Разработка функционала с рубрикаторами (сложные справочники) | 20d | 2013-12-23 | 2014-01-20 |  |  |  | 140.75d | 0d | Валерий Мацукевич | 160h |  |
| 149 | 1.4.5.3.1.3 | Разработка функционала для работы с словарями данных (простые, линейные справочники) | 20d | 2014-01-20 | 2014-02-17 | 148 |  |  | 140.75d |  | Валерий Мацукевич | 160h |  |
| 150 | 1.4.5.3.2 | Разработка форм для работы в GUI (настройки форм) | 15d | 2013-12-23 | 2014-01-13 |  |  |  | 160.75d | 0d | Java разработчик3 | 120h |  |
| 151 | 1.4.5.3.3 | Разработка структуры рабочего места АРМ | 5d | 2014-01-13 | 2014-01-20 | 140, 150 |  |  | 160.75d |  | Java разработчик3 | 40h |  |
| 152 | 1.4.5.3.4 | Разработка специфичных для форм АРМ элементов GUI | 20d | 2013-12-23 | 2014-01-20 |  |  |  | 160.75d |  | Java разработчик4 | 160h |  |
| 153 | 1.4.5.4 | Подготовка отчетов | 40d | 2014-01-06 | 2014-02-28 | 140, 142, 141 |  |  | 83d | 0d | Влад Симоненко; Алексей Львов; Андрей Карандей | 960h |  |
| 154 | 1.4.5.5 | Сопряжение с мобильным клиентом СМ4 | 50d | 2014-01-06 | 2014-03-14 | 139 |  |  | 121d |  | Java разработчик3 | 400h |  |
| 155 | 1.4.6 | **Тестирование** | 74d? | 2014-01-24 | 2014-05-07 | 20 |  |  | 83d | 0d |  | 2544h |  |
| 156 | 1.4.6.1 | **Функциональное тестирование** | 59d? | 2014-01-24 | 2014-04-16 |  |  |  | 89d |  |  | 2224h |  |
| 157 | 1.4.6.1.1 | Подготовка ПМИ | 5d | 2014-01-24 | 2014-01-30 |  |  |  | 89d | 0d | Тест Аналитик | 40h |  |
| 158 | 1.4.6.1.2 | Разработка "сценариев тестирования" | 15d | 2014-01-24 | 2014-02-13 |  |  |  | 94d | 6d | Тест Аналитик | 120h |  |
| 159 | 1.4.6.1.3 | Разработка модели нагрузки для тестирования | 10d | 2014-01-31 | 2014-02-13 | 157 |  |  | 94d | 6d | Тест Аналитик | 80h |  |
| 160 | 1.4.6.1.4 | Адаптация автоматизированных сценариев от СМ4 для создания нагрузки | 25d | 2014-01-31 | 2014-03-06 | 157 |  |  | 89d | 6d | Влад Симоненко | 200h |  |

Notes:
- 134: Сервис для работы с системным журналомВедение журнала действий пользователей и действий с объектами системы
- 135: Ведение журнала действий пользователей и действий с объектами системы

| ID | WBS | Task | Type | Duration | Start | Finish | Predecessors | Total slack | Free slack | Constraint | Resources | Work |
| --- | --- | --- | --- | --- | --- | --- | --- | --- | --- | --- | --- | --- |
| 161 | 1.4.6.1.5 | **Проведение тестирования** |  | 38d? | 2014-02-24 | 2014-04-16 | 158, 159 | 88d | 0d |  |  | 1784h |
| 162 | 1.4.6.1.5.1 | **Подготовка среды тестирования** |  | 15d? | 2014-02-24 | 2014-03-14 |  | 88d |  |  |  | 200h |
| 163 | 1.4.6.1.5.1.1 | Разворачивание системы |  | 5d? | 2014-02-24 | 2014-03-03 | 165SF | 131d | 0d |  | Влад Симоненко | 40h |
| 164 | 1.4.6.1.5.1.2 | Система готова для подключения инструментов мониторинга | milestone | 0d | 2014-03-03 | 2014-03-03 | 163 | 131d |  |  |  |  |
| 165 | 1.4.6.1.5.1.3 | Наполнение данными |  | 10d? | 2014-03-03 | 2014-03-14 | 153 | 83d | 0d |  | Влад Симоненко; Java разработчик6 | 160h |
| 166 | 1.4.6.1.5.2 | Среда тестирования готова | milestone | 0d | 2014-03-14 | 2014-03-14 | 165, 160 | 83d | 0d | start no earlier than 2012-05-24 |  |  |
| 167 | 1.4.6.1.5.3 | Проведение тестирования |  | 10d | 2014-03-17 | 2014-03-28 | 166 | 83d | 0d |  | Тест Аналитик; Тестировщик [200%] | 240h |
| 168 | 1.4.6.1.5.4 | **Обработка результатов тестирования и внесение изменений в модуль** |  | 15d | 2014-03-27 | 2014-04-16 | 167FS-2d | 83d |  |  |  | 1344h |
| 169 | 1.4.6.1.5.4.1 | Устранение замечаний по результатам функционального тестирования |  | 15d | 2014-03-27 | 2014-04-16 |  | 83d | 0d |  | Java разработчик5; Влад Симоненко [300%]; Валерий Мацукевич; Java разработчик3; Java разработчик4; Андрей Карандей; Алексей Львов; Андрей Цветков | 1200h |
| 170 | 1.4.6.1.5.4.2 | Проверка устранения замечаний |  | 6d | 2014-04-09 | 2014-04-16 | 169FS-6d | 83d | 0d |  | Тест Аналитик; Тестировщик [200%] | 144h |
| 171 | 1.4.6.2 | **Нагрузочное тестирование** |  | 28d | 2014-03-28 | 2014-05-07 | 157 | 83d |  |  |  | 320h |
| 172 | 1.4.6.2.1 | Стенд для нагрузочного тестирования подготовлен | milestone | 0d | 2014-03-28 | 2014-03-28 | 167 | 96d | 13d | finish no earlier than 2012-06-09 |  |  |
| 173 | 1.4.6.2.2 | Проведения нагрузочного тестирования |  | 10d | 2014-04-17 | 2014-04-30 | 170, 160, 172 | 83d | 0d |  | Влад Симоненко; Тест Аналитик; Тестировщик | 240h |
| 174 | 1.4.6.2.3 | Обработка результатов нагрузочного тестирования |  | 5d | 2014-05-01 | 2014-05-07 | 173 | 83d |  |  | Тест Аналитик; Тестировщик | 80h |
| 175 | 1.4.7 | Разработка модуля "Делопроизводство" завершена | milestone | 0d | 2014-05-07 | 2014-05-07 | 155 | 83d |  |  |  |  |
| 176 | 1.4.8 | **Подготовка документации** |  | 80d | 2014-01-24 | 2014-05-15 | 155SS | 77d |  |  |  | 800h |
| 177 | 1.4.8.1 | Разработка документа "Концепция системы " |  | 40d | 2014-01-24 | 2014-03-20 |  | 77d | 0d |  | Владимир Панов | 320h |
| 178 | 1.4.8.2 | Разработка "Software Architecture Document" |  | 40d | 2014-03-21 | 2014-05-15 | 177 | 77d | 0d |  | Владимир Панов | 320h |
| 179 | 1.4.8.3 | Документы подготовлены | milestone | 0d | 2014-05-15 | 2014-05-15 | 178 | 77d |  |  |  |  |
| 180 | 1.4.8.4 | Разработка "Software Architecture Document" для модулей первой очереди |  | 20d | 2014-01-24 | 2014-02-20 |  | 137d | 0d |  | Технический писатель | 160h |
| 181 | 1.4.8.5 | Документы подготовлены | milestone | 0d | 2014-02-20 | 2014-02-20 | 180 | 137d |  |  |  |  |
| 182 | 1.5 | **Проверка работоспособности решения - Организация демонстрации** |  | 25d? | 2014-02-24 | 2014-03-28 | 161SS | 111d |  |  |  | 448h |
| 183 | 1.5.1 | Подготовка стенда |  | 3d | 2014-02-24 | 2014-02-26 | 184SF | 133d |  |  | Влад Симоненко; Аналитик | 48h |
| 184 | 1.5.2 | Подготовка прототипа |  | 20d? | 2014-02-24 | 2014-03-21 |  | 111d | 0d |  | Влад Симоненко; Аналитик | 320h |
| 185 | 1.5.3 | Проведение демонстраций |  | 3d | 2014-03-24 | 2014-03-26 | 184 | 111d | 0d |  | Влад Симоненко; Аналитик | 48h |
| 186 | 1.5.4 | Анализ результатов - выводы |  | 2d | 2014-03-27 | 2014-03-28 | 185 | 111d |  |  | Влад Симоненко; Аналитик | 32h |
